# 草海典型性水域水生态保护与修复工程(2024工期计划)

Schedule from a web Gantt chart, 2024-01-01 to 2024-12-31.
Every day is a working day

## Schedule

| ID | WBS | Task | Duration | Start | Finish | Predecessors | Status |
| --- | --- | --- | --- | --- | --- | --- | --- |
| 2 | 1 | **一、退耕还湖湿地** | 194d | 2024-03-01 | 2024-09-10 |  |  |
| 3 | 1.1 | **水生植物恢复工程** | 184d | 2024-03-01 | 2024-08-31 |  |  |
| 4 | 1.1.1 | 矮生苦草等已种沉水植物补种 | 100d | 2024-03-01 | 2024-06-08 |  |  |
| 5 | 1.1.2 | 金鱼藻、海菜花种植及补种 | 84d | 2024-06-09 | 2024-08-31 | 4 | waiting |
| 6 | 1.2 | **鱼类种群调控工程** | 10d | 2024-09-01 | 2024-09-10 |  |  |
| 7 | 1.2.1 | 鱼类投放 | 10d | 2024-09-01 | 2024-09-10 | 5 | waiting |
| 8 | 2 | **二、入湖河口湿地** | 342d | 2024-01-09 | 2024-12-15 |  |  |
| 9 | 2.1 | **临时场地场地建设** | 62d | 2024-01-09 | 2024-03-10 |  |  |
| 10 | 2.1.1 | 临时场地基础建设 | 25d | 2024-01-09 | 2024-02-02 |  |  |
| 11 | 2.1.2 | 临时场地设备进场及安装 | 20d | 2024-02-20 | 2024-03-10 |  |  |
| 12 | 2.2 | **生态围隔布设工程（拦鱼网布设已完成）** | 10d | 2024-02-20 | 2024-02-29 |  |  |
| 13 | 2.2.1 | 软围隔布设 | 10d | 2024-02-20 | 2024-02-29 |  |  |
| 14 | 2.3 | **鱼类种群调控工程** | 290d | 2024-03-01 | 2024-12-15 |  |  |
| 15 | 2.3.1 | 清除鱼类 | 10d | 2024-03-01 | 2024-03-10 | 13 | waiting |
| 16 | 2.3.2 | 鱼类投放（局部调控） | 10d | 2024-12-06 | 2024-12-15 | 23 | waiting |
| 17 | 2.4 | **表层浮泥清除** | 240d | 2024-03-11 | 2024-11-05 |  |  |
| 18 | 2.4.1 | 清除表层浮泥第一期 | 30d | 2024-03-11 | 2024-04-09 | 11, 15 | waiting |
| 19 | 2.4.2 | 六个月观察期 | 180d | 2024-04-10 | 2024-10-06 | 18 | waiting |
| 20 | 2.4.3 | 清除表层浮泥第二期 | 30d | 2024-10-07 | 2024-11-05 | 19 | waiting |
| 21 | 2.5 | **水生植物恢复工程** | 240d | 2024-04-10 | 2024-12-05 |  |  |
| 22 | 2.5.1 | 沉水植物种植及补种第一期（约8.3万平方） | 60d | 2024-04-10 | 2024-06-08 | 18 | waiting |
| 23 | 2.5.2 | 沉水植物种植及补种第二期（约3.3万平方） | 30d | 2024-11-06 | 2024-12-05 | 20 | waiting |
| 24 | 3 | **三、敞水区** | 125d | 2024-05-01 | 2024-09-02 |  |  |
| 25 | 3.1 | **生态围隔布设工程** | 15d | 2024-05-01 | 2024-05-15 |  |  |
| 26 | 3.1.1 | 不透水围隔 | 15d | 2024-05-01 | 2024-05-15 |  |  |
| 27 | 3.1.2 | 拦鱼网 | 15d | 2024-05-01 | 2024-05-15 |  |  |

| ID | WBS | Task | Duration | Start | Finish | Predecessors | Status |
| --- | --- | --- | --- | --- | --- | --- | --- |
| 28 | 3.2 | **鱼类种群调控工程** | 110d | 2024-05-16 | 2024-09-02 |  |  |
| 29 | 3.2.1 | 清除鱼类 | 10d | 2024-05-16 | 2024-05-25 | 26, 27 | waiting |
| 30 | 3.2.2 | 鱼类投放 | 10d | 2024-08-26 | 2024-09-04 | 32 | waiting |
| 31 | 3.3 | **水生植物恢复工程** | 90d | 2024-05-27 | 2024-08-24 |  |  |
| 32 | 3.3.1 | 沉水植物种植及补种 | 90d | 2024-05-27 | 2024-08-24 | 29 | waiting |
| 33 | 4 | **四、水生态监管能力建设** | 366d | 2024-01-01 | 2024-12-31 |  |  |
| 34 | 4.1 | 跟踪监测评估 | 366d | 2024-01-01 | 2024-12-31 |  |  |
| 35 | 4.2 | 测藻仪采购及安装 | 214d | 2024-04-01 | 2024-10-31 |  |  |
| 36 | 4.3 | 水生态管理能力建设报告编制 | 214d | 2024-04-01 | 2024-10-31 |  |  |
